# 新产品

Schedule from MS Project, 2017-03-12 to 2020-02-17.

## Calendars

- 标准: Mon-Fri 08:00-12:00, 13:00-17:00; Sat-Sun off.

## Resources

| Resource |
| --- |
| 管理人员 |
| 产品工程设计 |
| 法律 |
| 市场 |
| 项目经理 |
| 加工工程师 |
| 生产工程师 |
| 安全 |
| 会计 |
| 用户 |
| 采购 |

## Schedule

| ID | WBS | Task | Type | Duration | Start | Finish | Predecessors | Total slack | Resources | Work |
| --- | --- | --- | --- | --- | --- | --- | --- | --- | --- | --- |
| 1 | 1 | **医学装备平台项目管理** |  | 766d? | 2017-03-12 | 2020-02-17 |  | 0d |  | 15688h |
| 2 | 1.1 | 组件项目团队 |  | 1d? | 2017-03-13 | 2017-03-13 |  | 765d |  |  |
| 3 | 1.2 | **新产品的初步筛选阶段** |  | 9d | 2017-03-12 | 2017-03-23 |  | 0d |  | 72h |
| 4 | 1.2.1 | 确定新产品的市场机会 | milestone | 0d | 2017-03-12 | 2017-03-12 |  | 0d | 管理人员; 产品工程设计 |  |
| 5 | 1.2.2 | 说明新产品设想(一页书面形式的披露材料) |  | 2d | 2017-03-13 | 2017-03-14 | 4 | 0d | 产品工程设计 | 16h |
| 6 | 1.2.3 | 为进行可行性决策搜集信息 |  | 6d | 2017-03-15 | 2017-03-22 | 5 | 0d | 产品工程设计 | 48h |
| 7 | 1.2.4 | 召开筛选委员会会议(决策是否采纳设想) |  | 1d | 2017-03-23 | 2017-03-23 | 6 | 0d | 产品工程设计 | 8h |
| 8 | 1.2.5 | 决策点: 是否进行初步研究 | milestone | 0d | 2017-03-23 | 2017-03-23 | 7 | 0d | 管理人员; 产品工程设计 |  |
| 9 | 1.3 | **初步研究阶段** |  | 53d | 2017-03-24 | 2017-06-06 |  | 0d |  | 1216h |
| 10 | 1.3.1 | 为初步研究分配资源 |  | 1d | 2017-03-24 | 2017-03-24 | 8 | 0d | 管理人员 | 8h |
| 11 | 1.3.2 | 制定初步研究计划 |  | 5d | 2017-03-27 | 2017-03-31 | 10 | 751d | 产品工程设计; 项目经理 | 80h |
| 12 | 1.3.3 | 对市场进行评估 |  | 10d | 2017-03-27 | 2017-04-07 | 10 | 746d | 市场 | 80h |
| 13 | 1.3.4 | 分析竞争情况 |  | 5d | 2017-03-27 | 2017-03-31 | 10 | 0d | 市场 | 40h |
| 14 | 1.3.5 | **技术可行性分析** |  | 20d | 2017-04-03 | 2017-04-28 |  | 0d |  | 160h |
| 15 | 1.3.5.1 | 生产实验室规模的产品 |  | 10d | 2017-04-03 | 2017-04-14 | 13 | 0d | 产品工程设计 | 80h |
| 16 | 1.3.5.2 | 评估内部产品 |  | 5d | 2017-04-17 | 2017-04-21 | 15 | 0d | 产品工程设计 | 40h |
| 17 | 1.3.5.3 | 确定生产所需的加工过程 |  | 5d | 2017-04-24 | 2017-04-28 | 16 | 0d | 加工工程师 | 40h |
| 18 | 1.3.6 | 评估生产能力 |  | 10d | 2017-05-01 | 2017-05-12 | 17 | 0d | 产品工程设计; 生产工程师 | 160h |
| 19 | 1.3.7 | 确定安全因素 |  | 10d | 2017-05-01 | 2017-05-12 | 18SS | 0d | 安全 | 80h |
| 20 | 1.3.8 | 确定环境因素 |  | 10d | 2017-05-01 | 2017-05-12 | 19SS | 0d | 产品工程设计; 法律 | 160h |
| 21 | 1.3.9 | 检查法律问题 |  | 10d | 2017-05-01 | 2017-05-12 | 20SS | 0d | 法律; 项目经理 | 160h |
| 22 | 1.3.10 | 进行财务评估 |  | 10d | 2017-05-15 | 2017-05-26 | 21, 18, 19, 20 | 0d | 会计 | 80h |
| 23 | 1.3.11 | 进行风险分析 |  | 5d | 2017-05-29 | 2017-06-02 | 22 | 0d | 产品工程设计; 项目经理 | 80h |
| 24 | 1.3.12 | 起草初步开发阶段计划 |  | 10d | 2017-05-15 | 2017-05-26 | 22SS | 5d | 产品工程设计 | 80h |
| 25 | 1.3.13 | 做出初步研究阶段的决策 |  | 2d | 2017-06-05 | 2017-06-06 | 23, 24 | 0d | 管理人员; 产品工程设计; 项目经理 | 48h |
| 26 | 1.3.14 | 决策点: 是否进入开发阶段 | milestone | 0d | 2017-06-06 | 2017-06-06 | 25 | 704d | 管理人员; 项目经理 |  |

| ID | WBS | Task | Type | Duration | Start | Finish | Predecessors | Total slack | Free slack | Resources | Work |
| --- | --- | --- | --- | --- | --- | --- | --- | --- | --- | --- | --- |
| 27 | 1.4 | **开发阶段** |  | 264d | 2017-06-07 | 2018-06-11 |  | 0d |  |  | 5408h |
| 28 | 1.4.1 | 为开发阶段计划分配资源 |  | 1d | 2017-06-07 | 2017-06-07 | 25 | 0d |  | 管理人员; 项目经理 | 16h |
| 29 | 1.4.2 | **市场评估** |  | 40d | 2017-06-08 | 2017-08-02 |  | 2d |  |  | 480h |
| 30 | 1.4.2.1 | 搜集市场信息 |  | 15d | 2017-06-08 | 2017-06-28 | 28 | 2d | 0d | 产品工程设计; 市场 | 240h |
| 31 | 1.4.2.2 | 确定并联系抽样用户群 |  | 5d | 2017-06-29 | 2017-07-05 | 30 | 12d | 10d | 市场 | 40h |
| 32 | 1.4.2.3 | 进行竞争者分析 |  | 15d | 2017-06-29 | 2017-07-19 | 30 | 2d | 0d | 市场 | 120h |
| 33 | 1.4.2.4 | 重新定义产品需求 |  | 10d | 2017-07-20 | 2017-08-02 | 31, 32 | 2d |  | 产品工程设计 | 80h |
| 34 | 1.4.3 | **产品技术评估** |  | 204d | 2017-06-08 | 2018-03-20 |  | 0d |  |  | 3488h |
| 35 | 1.4.3.1 | 确定产品特征(性能标准) |  | 2d | 2017-06-08 | 2017-06-09 | 28 | 0d |  | 产品工程设计 | 16h |
| 36 | 1.4.3.2 | 研究原型生产过程 |  | 10d | 2017-06-12 | 2017-06-23 | 35 | 0d |  | 产品工程设计 | 80h |
| 37 | 1.4.3.3 | 生产原型产品 |  | 25d | 2017-06-26 | 2017-07-28 | 36 | 0d |  | 产品工程设计 | 200h |
| 38 | 1.4.3.4 | 进行内部产品审查 |  | 5d | 2017-07-31 | 2017-08-04 | 37 | 0d |  | 管理人员; 产品工程设计 | 80h |
| 39 | 1.4.3.5 | 为专利申请过程建立档案 |  | 10d | 2017-06-12 | 2017-06-23 | 35 | 229d | 194d | 产品工程设计 | 80h |
| 40 | 1.4.3.6 | 进行市场/技术审查 |  | 92d | 2017-08-07 | 2017-12-12 | 38, 33 | 0d |  | 市场; 产品工程设计 | 1472h |
| 41 | 1.4.3.7 | 重新设计生产过程(如果必要) |  | 10d | 2017-12-13 | 2017-12-26 | 40 | 0d |  | 产品工程设计; 加工工程师 | 160h |
| 42 | 1.4.3.8 | 修改原型生产过程 |  | 15d | 2017-12-27 | 2018-01-16 | 41 | 0d |  | 加工工程师 | 120h |
| 43 | 1.4.3.9 | 制定用户产品测试计划 |  | 5d | 2018-01-17 | 2018-01-23 | 42 | 20d |  | 项目经理 | 40h |
| 44 | 1.4.3.10 | 生产用于用户测试的产品 |  | 25d | 2018-01-17 | 2018-02-20 | 42 | 0d |  | 产品工程设计; 市场; 项目经理 | 600h |
| 45 | 1.4.3.11 | 审查初步的生产过程 |  | 10d | 2018-02-21 | 2018-03-06 | 44 | 10d |  | 加工工程师; 生产工程师 | 160h |
| 46 | 1.4.3.12 | 展开用户对原型产品的测试 |  | 20d | 2018-02-21 | 2018-03-20 | 44, 43 | 0d |  | 产品工程设计; 项目经理; 用户 | 480h |
| 47 | 1.4.4 | **概念评估** |  | 57d | 2018-03-21 | 2018-06-07 |  | 0d |  |  | 1376h |
| 48 | 1.4.4.1 | 进行市场/技术审查 |  | 2d | 2018-03-21 | 2018-03-22 | 46, 45 | 0d |  | 管理人员; 产品工程设计; 市场 | 48h |
| 49 | 1.4.4.2 | 准备初步的生产设计 |  | 20d | 2018-03-23 | 2018-04-19 | 48 | 0d |  | 产品工程设计 | 160h |
| 50 | 1.4.4.3 | 评估可供选择的外包生产方案 |  | 10d | 2018-04-20 | 2018-05-03 | 49 | 467d |  | 法律; 加工工程师 | 160h |
| 51 | 1.4.4.4 | 审查法律和专利方面的问题 |  | 10d | 2018-03-23 | 2018-04-05 | 48, 39 | 35d |  | 管理人员; 法律 | 160h |
| 52 | 1.4.4.5 | 审查环境问题 |  | 10d | 2018-04-20 | 2018-05-03 | 49 | 5d |  | 产品工程设计 | 80h |
| 53 | 1.4.4.6 | 审查产品安全性 |  | 15d | 2018-03-23 | 2018-04-12 | 48 | 20d |  | 产品工程设计; 安全 | 240h |
| 54 | 1.4.4.7 | 评估/预测产品生命周期 |  | 15d | 2018-04-20 | 2018-05-10 | 49 | 0d |  | 产品工程设计; 项目经理 | 240h |
| 55 | 1.4.4.8 | 更新财政分析 |  | 10d | 2018-05-11 | 2018-05-24 | 54, 53, 52, 58 | 0d |  | 会计 | 80h |
| 56 | 1.4.4.9 | 风险分析 |  | 10d | 2018-05-25 | 2018-06-07 | 51, 55, 53 | 0d |  | 产品工程设计 | 80h |
| 57 | 1.4.4.10 | 审查初步的研究标准 |  | 2d | 2018-05-25 | 2018-05-28 | 55 | 8d |  | 管理人员; 产品工程设计; 法律 | 48h |
| 58 | 1.4.4.11 | 制定试生产阶段计划 |  | 5d | 2018-03-23 | 2018-03-29 | 49SS | 30d |  | 产品工程设计; 项目经理 | 80h |
| 59 | 1.4.5 | 进行开发阶段审查 |  | 2d | 2018-06-08 | 2018-06-11 | 56, 57, 58 | 0d |  | 产品工程设计; 项目经理; 加工工程师 | 48h |
| 60 | 1.4.6 | 决策点: 是否进入试生产阶段 | milestone | 0d | 2018-06-11 | 2018-06-11 | 59 | 0d |  | 管理人员; 项目经理 |  |

| ID | WBS | Task | Duration | Start | Finish | Predecessors | Total slack | Resources | Work |
| --- | --- | --- | --- | --- | --- | --- | --- | --- | --- |
| 61 | 1.5 | **试生产阶段** | 115d | 2018-06-12 | 2018-11-19 |  | 0d |  | 1992h |
| 62 | 1.5.1 | 为试生产阶段分配资源 | 1d | 2018-06-12 | 2018-06-12 | 59, 60 | 0d | 管理人员; 项目经理 | 16h |
| 63 | 1.5.2 | 确保用户能参予商品化试验阶段的工作 | 5d | 2018-06-13 | 2018-06-19 | 62 | 0d | 法律; 项目经理 | 80h |
| 64 | 1.5.3 | **试生产** | 70d | 2018-06-20 | 2018-09-25 |  | 0d |  | 1160h |
| 65 | 1.5.3.1 | 排定日程/保留试生产所需的设施 | 5d | 2018-06-20 | 2018-06-26 | 63 | 0d | 项目经理 | 40h |
| 66 | 1.5.3.2 | 解决原材料和成品的后勤问题 | 5d | 2018-06-27 | 2018-07-03 | 65 | 0d | 产品工程设计; 项目经理 | 80h |
| 67 | 1.5.3.3 | 复查试生产计划和要求 | 5d | 2018-06-20 | 2018-06-26 | 63 | 5d | 产品工程设计; 项目经理 | 80h |
| 68 | 1.5.3.4 | 开始试生产 | 30d | 2018-07-04 | 2018-08-14 | 66, 67 | 0d | 产品工程设计 | 240h |
| 69 | 1.5.3.5 | 监控用户试用情况 | 20d | 2018-07-04 | 2018-07-31 | 68SS | 0d | 产品工程设计 | 160h |
| 70 | 1.5.3.6 | 审查初步试生产的结果 | 10d | 2018-08-01 | 2018-08-14 | 69 | 0d | 产品工程设计; 项目经理 | 160h |
| 71 | 1.5.3.7 | 继续试生产 | 30d | 2018-08-15 | 2018-09-25 | 70 | 0d | 产品工程设计 | 240h |
| 72 | 1.5.3.8 | 完成对用户试用情况的监控 | 20d | 2018-08-15 | 2018-09-11 | 71SS | 0d | 产品工程设计 | 160h |
| 73 | 1.5.4 | **试验结果分析** | 49d | 2018-09-12 | 2018-11-19 |  | 0d |  | 736h |
| 74 | 1.5.4.1 | 确认销售和营销策略 | 5d | 2018-09-12 | 2018-09-18 | 72 | 0d | 市场; 项目经理 | 80h |
| 75 | 1.5.4.2 | 确认产品的安全性 | 5d | 2018-09-12 | 2018-09-18 | 74SS | 0d | 项目经理; 安全 | 80h |
| 76 | 1.5.4.3 | 重新评估生产过程 | 15d | 2018-09-19 | 2018-10-09 | 74, 75 | 0d | 加工工程师 | 120h |
| 77 | 1.5.4.4 | 制定商品化计划 | 15d | 2018-10-10 | 2018-10-30 | 76 | 0d | 产品工程设计; 市场 | 240h |
| 78 | 1.5.4.5 | 复查财务状况 | 5d | 2018-10-31 | 2018-11-06 | 77 | 5d | 会计 | 40h |
| 79 | 1.5.4.6 | 复查专利和法律问题 | 10d | 2018-10-31 | 2018-11-13 | 77 | 0d | 法律 | 80h |
| 80 | 1.5.4.7 | 指定商品化过程的领导职责和资源 | 2d | 2018-11-14 | 2018-11-15 | 78, 79 | 0d | 管理人员; 项目经理 | 32h |
| 81 | 1.5.4.8 | 对试生产阶段进行审查并做出商品化决策 | 2d | 2018-11-16 | 2018-11-19 | 80 | 0d | 管理人员; 产品工程设计; 市场; 加工工程师 | 64h |
| 82 | 1.6 | **商品化阶段** | 195d | 2018-11-20 | 2019-08-19 |  | 0d |  | 3480h |
| 83 | 1.6.1 | **产品的生产和监控** | 168d | 2018-11-20 | 2019-07-11 |  | 0d |  | 2608h |
| 84 | 1.6.1.1 | 确认产品规范 | 3d | 2018-11-20 | 2018-11-22 | 81 | 0d | 产品工程设计; 生产工程师 | 48h |
| 85 | 1.6.1.2 | 确认用户对规范的接受程度并参与试验 | 10d | 2018-11-23 | 2018-12-06 | 84 | 0d | 产品工程设计; 项目经理 | 160h |
| 86 | 1.6.1.3 | 确定生产过程的要求 | 10d | 2018-12-07 | 2018-12-20 | 85 | 0d | 加工工程师; 生产工程师 | 160h |
| 87 | 1.6.1.4 | 设计和定购新的设备 | 30d | 2018-12-21 | 2019-01-31 | 86 | 0d | 产品工程设计; 采购 | 480h |
| 88 | 1.6.1.5 | 安装并测试新的设备或改装的设备 | 30d | 2019-02-01 | 2019-03-14 | 87 | 0d | 产品工程设计; 生产工程师 | 480h |
| 89 | 1.6.1.6 | 确认生产能力 | 10d | 2019-03-15 | 2019-03-28 | 88 | 0d | 生产工程师 | 80h |
| 90 | 1.6.1.7 | 制定并审查生产试验计划(解决后勤问题) | 5d | 2019-03-29 | 2019-04-04 | 89 | 0d | 产品工程设计; 项目经理 | 80h |
| 91 | 1.6.1.8 | 开始商业产量的生产 | 40d | 2019-04-05 | 2019-05-30 | 90 | 0d | 产品工程设计; 生产工程师 | 640h |
| 92 | 1.6.1.9 | 监控用户接受程度试验 | 30d | 2019-05-31 | 2019-07-11 | 91 | 0d | 产品工程设计; 项目经理 | 480h |

| ID | WBS | Task | Duration | Start | Finish | Predecessors | Total slack | Free slack | Resources | Work |
| --- | --- | --- | --- | --- | --- | --- | --- | --- | --- | --- |
| 93 | 1.6.2 | **商品化分析** | 57d | 2019-05-31 | 2019-08-19 |  | 0d |  |  | 872h |
| 94 | 1.6.2.1 | 进行内部产品测试 | 15d | 2019-05-31 | 2019-06-20 | 91 | 15d |  | 产品工程设计 | 120h |
| 95 | 1.6.2.2 | 审查生产业绩 | 10d | 2019-07-12 | 2019-07-25 | 92, 94 | 0d |  | 管理人员; 产品工程设计; 项目经理 | 240h |
| 96 | 1.6.2.3 | 确定长期生产需求 | 15d | 2019-07-26 | 2019-08-15 | 95 | 0d |  | 加工工程师; 生产工程师 | 240h |
| 97 | 1.6.2.4 | 重新计算产品经济效益 | 10d | 2019-07-26 | 2019-08-08 | 95 | 5d |  | 产品工程设计; 市场; 会计 | 240h |
| 98 | 1.6.2.5 | 确认继续进行商品化的决策 | 2d | 2019-08-16 | 2019-08-19 | 97, 96 | 0d |  | 管理人员; 项目经理 | 32h |
| 99 | 1.7 | **商品化完成后的回顾** | 130d | 2019-08-20 | 2020-02-17 |  | 0d |  |  | 3520h |
| 100 | 1.7.1 | 确定产品是否达到用户对成本/性能比的期望 | 60d | 2019-08-20 | 2019-11-11 | 98 | 0d |  | 管理人员; 项目经理 | 960h |
| 101 | 1.7.2 | 确定销售是否达到了预期值 | 60d | 2019-08-20 | 2019-11-11 | 100SS | 40d | 0d | 管理人员; 市场 | 960h |
| 102 | 1.7.3 | 确定产品在竞争对手做出反应的情况下是否保持了市场份额 | 30d | 2019-11-12 | 2019-12-23 | 101 | 40d |  | 管理人员; 市场 | 480h |
| 103 | 1.7.4 | 评估生产过程的稳定性和成本效益 | 40d | 2019-11-12 | 2020-01-06 | 100 | 0d |  | 项目经理; 生产工程师 | 640h |
| 104 | 1.7.5 | 确定当前的经济状况是否与预期的经济状况相一致 | 15d | 2020-01-07 | 2020-01-27 | 103 | 0d |  | 市场 | 120h |
| 105 | 1.7.6 | 评估扩大产品和产品线的可能性 | 15d | 2020-01-28 | 2020-02-17 | 104 | 0d |  | 管理人员; 产品工程设计; 市场 | 360h |
